# Pfizer Continuum Project Plan

Schedule from MS Project, 2012-12-03 to 2013-12-05, A marks actual dates.

## Calendars

- Standard: Mon-Fri 08:00-12:00, 13:00-17:00; Sat-Sun off.

## Resources

| Resource |
| --- |
| Bala |
| Smita |
| Nelli |
| Paula |
| Hugh |
| Steve Matyas |
| Todd |
| Steve L |
| Sohal |
| Harsha |
| Naveen |
| BDA Team |
| Systems Team |
| QA3 |
| QA4 |
| QA5 |
| Vrushali |
| Max |
| VCDE |
| Anu |
| rushali |
| CTEP |
| caXchange |
| C3PR |
| caAERS |
| PSC |
| LV |
| BDA |
| "C3PR |
| Documentation |
| caGrid |
| QA |
| BAM |
| Edmond |
| NCI |
| SAIC-F |
| Web Team |
| Bill Dyer |
| CCTS Team |
| John S |
| Patrick |
| Architects |
| Christo |
| John |
| Rhett |
| Nellie |
| Steve |
| Kalpesh |
| David L |
| Stevel L |
| Kumar C |
| Gia |
| Wendy |
| Raj |
| Steve M |
| Lauren |
| Systems |
| CTRO |
| Hannes |
| SMEs |
| Gisele |
| Joe |
| CTRP Dev team |
| CBIIT |
| All |
| Analysts |
| TBD |
| Charles |
| ESST |
| Developers |
| Lisa |
| Christophe |
| Krishna |
| QA1 |
| QA2 |
| David |
| Security |
| Arch |
| Tech Leads |
| Paula B |
| Kalpana |
| KK |
| Abe |
| Kim |
| Vijay |
| CAT |
| George |
| Larry |
| Michael O |
| Resource 1 |
| Resource 2 |
| Resource3 |
| Resource 4 |
| Resource 5 |
| Gisele S |
| Dianne R |
| HR |
| NA |
| SL |
| ScenPro |
| 5AM |
| TP |
| EM |
| KE |
| JM |
| DL |
| Paul |
| Michael |
| Eilis |
| Team |
| Dev team |
| Ram P |
| NIH 508 team |
| Bryan |
| Bill D |
| Marina |
| Ye |
| Rashmi |
| Ann Wiley |
| Henry |
| QA* |
| Systems* |
| Shine |
| System |
| be |
| Jill |

## Schedule

| ID | WBS | Task | Type | Duration | Start | Finish | Predecessors | Complete | Remaining | Total slack | Free slack | Constraint | Resources | Work | Actual work |
| --- | --- | --- | --- | --- | --- | --- | --- | --- | --- | --- | --- | --- | --- | --- | --- |
| 1 | 1 | **caIntegrator** |  | 264d? | 2012-12-03 A | 2013-12-05 |  | 7% | 244.93d? | 0d |  | start no earlier than 2012-12-03 |  | 2864h | 390.4h |
| 2 | 1.1 | **caIntegrator 1.4.01 - patch release** |  | 15d | 2013-01-02 | 2013-01-22 |  |  |  | 227d |  |  |  | 120h |  |
| 3 | 1.1.1 | Appscan on QA |  | 6d | 2013-01-02 | 2013-01-09 |  |  |  | 227d | 0d | start no earlier than 2013-01-02 | Systems* | 48h |  |
| 4 | 1.1.2 | Appscan on Stage |  | 4d | 2013-01-10 | 2013-01-15 | 3 |  |  | 227d | 0d | start no earlier than 2012-12-05 | Systems* | 32h |  |
| 5 | 1.1.3 | QA reports and Approval |  | 2d | 2013-01-16 | 2013-01-17 | 4 |  |  | 227d | 0d |  | QA* | 16h |  |
| 6 | 1.1.4 | Prod Release |  | 3d | 2013-01-18 | 2013-01-22 | 5 |  |  | 227d |  |  | Systems* | 24h |  |
| 7 | 1.2 | **caIntegrator 1.4.1** |  | 134d? | 2012-12-06 A | 2013-06-11 |  | 16% | 111.92d? | 39d |  |  |  | 1264h | 390.4h |
| 8 | 1.2.1 | MILESTONE: PROJECT KICKOFF |  | 1d | 2012-12-06 A | 2012-12-06 A |  | 100% |  |  |  | start no earlier than 2012-12-06 |  |  |  |
| 9 | 1.2.2 | EPLC Project Management Plan |  | 3d | 2013-01-02 A | 2013-01-04 A |  | 100% |  |  |  | start no earlier than 2013-01-02 | Shine | 24h | 24h |
| 10 | 1.2.3 | Github Access |  | 2d | 2013-01-07 A | 2013-01-08 A |  | 100% |  |  |  | start no earlier than 2013-01-07 |  |  |  |
| 11 | 1.2.4 | USCF JBOSS issues |  | 2d | 2013-01-07 A | 2013-01-08 A |  | 100% |  |  |  | start no earlier than 2013-01-07 | Abe | 16h | 16h |
| 12 | 1.2.5 | UCSF Support (Role Based Permission) |  | 1d | 2013-01-25 A | 2013-01-25 A | 11 | 100% |  |  |  |  | Abe | 8h | 8h |
| 13 | 1.2.6 | **OSDI / Build Changes** |  | 19d? | 2013-01-09 A | 2013-02-04 A | 12 | 100% |  |  |  |  | Abe | 208h | 208h |
| 14 | 1.2.6.1 | Local copy to github, split s/w and documentation, license/copyright |  | 3d? | 2013-01-09 A | 2013-01-11 A |  | 100% |  |  |  | start no earlier than 2013-01-09 | Abe | 24h | 24h |
| 15 | 1.2.6.2 | Code Changes |  | 4d | 2013-01-22 A | 2013-01-25 A |  | 100% |  |  |  | start no earlier than 2013-01-22 | Abe | 32h | 32h |
| 16 | 1.2.6.3 | OSDI Phase 1 - complete (Pending AntHill Pro Deployment) |  | 6d | 2013-01-28 A | 2013-02-04 A | 15 | 100% |  |  |  |  | Abe | 48h | 48h |
| 17 | 1.2.7 | 508 Compliance on Dev (100%) |  | 3d | 2013-02-05 A | 2013-02-07 A | 13 | 100% |  |  |  |  | Abe | 24h | 24h |
| 18 | 1.2.8 | UCSF Support |  | 2d | 2013-02-08 A | 2013-02-11 A | 17 | 100% |  |  |  |  | Abe | 16h | 16h |
| 19 | 1.2.9 | Fix Appscan Issues |  | 10d | 2013-02-08 A | 2013-02-21 A | 18 | 100% |  |  |  |  | Abe | 80h | 80h |
| 20 | 1.2.10 | 508 Compliance on Prod (100%) |  | 3d | 2013-02-22 A | 2013-02-26 | 19 | 60% | 1.2d | 10d | 0d |  | Abe | 24h | 14.4h |
| 21 | 1.2.11 | Documentation Changes (Context Sensitive links) |  | 2d | 2013-02-27 | 2013-02-28 | 20 |  |  | 10d | 0d |  | Abe | 16h |  |
| 22 | 1.2.12 | caBIO replacement changes |  | 14d | 2013-03-01 | 2013-03-20 | 21 |  |  | 95d | 0d |  | Abe | 112h |  |
| 23 | 1.2.13 | Documentation Changes |  | 3d | 2013-03-21 | 2013-03-25 | 22 |  |  | 95d |  |  | Jill | 24h |  |
| 24 | 1.2.14 | Bug fixes and other improvements |  | 10d | 2013-03-01 | 2013-03-14 | 21 |  |  | 10d | 0d |  | Abe | 80h |  |
| 25 | 1.2.15 | AntHill Pro setup |  | 2d | 2013-03-15 | 2013-03-18 | 24 |  |  | 10d | 0d |  | System | 16h |  |
| 26 | 1.2.16 | Final test and Deployment on Dev (Anthill Pro) |  | 4d | 2013-03-19 | 2013-03-22 | 25 |  |  | 10d | 0d |  | Abe | 32h |  |
| 27 | 1.2.17 | Appscan on Dev |  | 4d | 2013-03-15 | 2013-03-20 | 24 |  |  | 39.5d | 0d | start no earlier than 2013-02-15 | System | 32h |  |
| 28 | 1.2.18 | Regression Testing on QA tier |  | 15d | 2013-03-21 | 2013-04-10 | 27 |  |  | 39.5d | 0d |  | QA* | 120h |  |
| 29 | 1.2.19 | Installer Testing |  | 4d | 2013-04-11 | 2013-04-16 | 28 |  |  | 77d | 0d |  | QA* | 32h |  |
| 30 | 1.2.20 | Section 508 testing on QA tier |  | 2d | 2013-04-17 | 2013-04-18 | 29 |  |  | 77d |  |  | QA* | 16h |  |
| 31 | 1.2.21 | Appscan on QA tier |  | 15d | 2013-04-11 | 2013-05-01 | 28 |  |  | 39.5d | 0d |  | Systems* | 120h |  |
| 32 | 1.2.22 | Test Results Review and Reporting |  | 3d | 2013-05-02 | 2013-05-06 | 31 |  |  | 39.5d | 0d |  | QA* | 24h |  |
| 33 | 1.2.23 | Deploy to STAGE |  | 3d | 2013-05-07 | 2013-05-09 | 32 |  |  | 39.5d | 0d |  | Systems* | 24h |  |
| 34 | 1.2.24 | Appscan on STAGE tier |  | 15d | 2013-05-10 | 2013-05-30 | 33 |  |  | 39.5d | 0d |  | Systems* | 120h |  |
| 35 | 1.2.25 | Regression Testing on STAGE |  | 5d | 2013-05-10 | 2013-05-16 | 33 |  |  | 49.5d | 10d |  | QA* | 40h |  |
| 36 | 1.2.26 | Test Results Review and Reporting |  | 3d | 2013-05-31 | 2013-06-04 | 34, 35 |  |  | 39.5d | 0d |  | QA* | 24h |  |
| 37 | 1.2.27 | Create release artifacts |  | 2d | 2013-05-10 | 2013-05-13 | 33 |  |  | 60d |  |  |  |  |  |
| 38 | 1.2.28 | Deploy to PRODUCTION |  | 3d | 2013-06-05 | 2013-06-07 | 36 |  |  | 39.5d | 0d |  | Systems* | 24h |  |
| 39 | 1.2.29 | Update product landing page |  | 0.5d | 2013-06-10 | 2013-06-10 | 38 |  |  | 39.5d | 0d |  |  |  |  |
| 40 | 1.2.30 | QA smoke tests PRODUCTION |  | 1d | 2013-06-10 | 2013-06-11 | 38, 39 |  |  | 39.5d | 0d |  | QA* | 8h |  |
| 41 | 1.2.31 | MILESTONE: RELEASE 1.4.1 | milestone | 0d | 2013-06-11 | 2013-06-11 | 40 |  |  | 39.5d |  | start no earlier than 2012-01-09 |  |  |  |
| 42 | 1.2.32 | User Support |  | 85d | 2013-02-13 | 2013-06-11 |  |  |  | 39d |  | finish no earlier than 2013-06-11 |  |  |  |

| ID | WBS | Task | Type | Duration | Start | Finish | Predecessors | Total slack | Free slack | Constraint | Resources | Work |
| --- | --- | --- | --- | --- | --- | --- | --- | --- | --- | --- | --- | --- |
| 43 | 1.3 | **caIntegrator 1.5** |  | 184d | 2013-03-25 | 2013-12-05 |  | 0d |  |  |  | 1480h |
| 44 | 1.3.1 | Tech Stack Upgrades - Spring |  | 20d | 2013-03-25 | 2013-04-19 | 26 | 10d | 0d |  | Abe | 160h |
| 45 | 1.3.2 | Bug Fixes and Improvements |  | 25d | 2013-04-22 | 2013-05-24 | 44 | 10d | 0d |  | Abe | 200h |
| 46 | 1.3.3 | CSM/UPT upgrade changes |  | 4d | 2013-05-27 | 2013-05-30 | 45 | 10d | 0d |  | Abe | 32h |
| 47 | 1.3.4 | Support for release 1.4.1 |  | 10d | 2013-05-31 | 2013-06-13 | 46 | 10d | 0d |  | Abe | 80h |
| 48 | 1.3.5 | Performance Improvements |  | 30d | 2013-06-14 | 2013-07-25 | 47 | 10d | 0d |  | Abe | 240h |
| 49 | 1.3.6 | Usability and Other Improvements Requested |  | 30d | 2013-07-26 | 2013-09-05 | 48 | 10d | 0d |  | Abe | 240h |
| 50 | 1.3.7 | Compliance (EPLC, Section 508) |  | 5d | 2013-09-06 | 2013-09-12 | 49 | 10d | 0d |  | Abe | 40h |
| 51 | 1.3.8 | MILESTONE: EPLC REVIEW (as needed) | milestone | 0d | 2013-09-12 | 2013-09-12 | 50 | 60d |  | start no earlier than 2012-01-09 |  |  |
| 52 | 1.3.9 | Appscan on Dev |  | 12d | 2013-09-13 | 2013-09-30 | 50 | 48d |  |  |  |  |
| 53 | 1.3.10 | Regression Testing on QA tier |  | 12d | 2013-09-13 | 2013-09-30 | 50 | 10d | 0d |  | QA* | 96h |
| 54 | 1.3.11 | Installer Testing |  | 4d | 2013-10-01 | 2013-10-04 | 53 | 42d | 0d |  | QA* | 32h |
| 55 | 1.3.12 | Section 508 testing on QA tier |  | 2d | 2013-10-07 | 2013-10-08 | 54 | 42d |  |  | QA* | 16h |
| 56 | 1.3.13 | Appscan on QA tier |  | 15d | 2013-10-01 | 2013-10-21 | 53 | 10d | 0d |  | Systems* | 120h |
| 57 | 1.3.14 | Test Results Review and Reporting |  | 3d | 2013-10-22 | 2013-10-24 | 56 | 10d | 0d |  | QA* | 24h |
| 58 | 1.3.15 | Deploy to STAGE |  | 1d | 2013-10-25 | 2013-10-25 | 57 | 10d | 0d |  | Systems* | 8h |
| 59 | 1.3.16 | Appscan on STAGE tier |  | 15d | 2013-10-28 | 2013-11-15 | 58 | 10d | 0d |  | Systems* | 120h |
| 60 | 1.3.17 | Regression Testing on STAGE |  | 5d | 2013-10-28 | 2013-11-01 | 58 | 20d | 10d |  | QA* | 40h |
| 61 | 1.3.18 | Test Results Review and Reporting |  | 1d | 2013-11-18 | 2013-11-18 | 59, 60 | 10d | 0d |  | QA* | 8h |
| 62 | 1.3.19 | Create release artifacts |  | 1d | 2013-10-28 | 2013-10-28 | 58 | 28d |  |  |  |  |
| 63 | 1.3.20 | Deploy to PRODUCTION |  | 2d | 2013-11-19 | 2013-11-20 | 61 | 10d | 0d |  | Systems* | 16h |
| 64 | 1.3.21 | Update product landing page |  | 0.5d | 2013-11-21 | 2013-11-21 | 63 | 10.5d |  |  |  |  |
| 65 | 1.3.22 | QA smoke tests PRODUCTION |  | 1d | 2013-11-21 | 2013-11-21 | 63 | 10d | 0d |  | QA* | 8h |
| 66 | 1.3.23 | MILESTONE: RELEASE 1.5 | milestone | 0d | 2013-11-21 | 2013-11-21 | 65 | 10d |  | start no earlier than 2012-01-09 |  |  |
| 67 | 1.3.24 | User Support |  | 88d | 2013-08-06 | 2013-12-05 | 7 | 0d |  | finish no earlier than 2013-12-05 |  |  |
| 69 | 1.4 | *QA and Systems are external resources and NOT being proposed under this contract. | milestone | 0d | 2012-12-03 | 2012-12-03 |  | 264d |  |  |  |  |
